Schedule from MS Project, 2025-09-18 to 2025-12-05, costs in €, A marks actual dates.
Microsoft

## Calendars

- Calendario-Sevilla: Mon-Fri 09:00-13:00, 15:00-19:00; Sat-Sun off. Exceptions (off unless hours are given): 2025-10-13 (Festividad Día de la Hispanidad), 2025-11-01 (Festividad Todos los Santos).

## Resources

| Resource | Group | Rate |
| --- | --- | --- |
| Jesús Torres Valderrama | Stakeholders |  |
| David Valencia Toscano | Dirección | 40 |
| Eloy Sancho Cebrero | Equipo de desarrollo | 24 |
| Iván Fernández Limárquez | Equipo de desarrollo | 24 |
| María del Pino Pérez Domínguez | Equipo de desarrollo | 24 |
| Fernando Partal García | Equipo de desarrollo | 24 |

## Schedule

| ID | WBS | Task | Type | Duration | Start | Finish | Predecessors | Complete | Remaining | Actual start | Actual finish | Baseline start | Baseline finish | Baseline duration | Baseline 1 start | Baseline 1 finish | Resources | Work | Actual work | Cost | Baseline cost | Actual cost |
| --- | --- | --- | --- | --- | --- | --- | --- | --- | --- | --- | --- | --- | --- | --- | --- | --- | --- | --- | --- | --- | --- | --- |
| 1 | 1 | **Acta de constitución** |  | 5.88d | 2025-09-18 08:00 A | 2025-09-25 17:00 |  | 100% |  |  | 2025-09-25 08:20 | 2025-09-18 08:00 | 2025-09-25 17:00 | 5.88d | 2025-09-18 08:00 | 2025-09-25 17:00 |  | 4.6h | 4.6h | 173.33 | 2,053.33 | 173.33 |
| 2 | 1.1 | Redacción del acta de constitución | manual | 3h | 2025-09-18 08:00 A | 2025-09-18 11:00 A |  | 100% |  |  |  | 2025-09-18 08:00 | 2025-09-18 11:00 | 3h | 2025-09-18 08:00 | 2025-09-18 11:00 | David Valencia Toscano | 3h | 3h | 120 | 120 | 120 |
| 3 | 1.2 | Revisión y ajustes sobre el acta de constitución | manual | 1h | 2025-09-21 08:00 A | 2025-09-21 09:00 A | 2 | 100% |  |  |  | 2025-09-21 08:00 | 2025-09-21 09:00 | 1h | 2025-09-21 08:00 | 2025-09-21 09:00 | David Valencia Toscano; Jesús Torres Valderrama [20%] | 1.2h | 1.2h | 40 | 40 | 40 |
| 4 | 1.3 | Presentación y validación del acta de constitución | manual | 20min | 2025-09-25 08:00 A | 2025-09-25 08:20 A | 3 | 100% |  |  |  | 2025-09-25 08:00 | 2025-09-25 08:20 | 20min | 2025-09-25 08:00 | 2025-09-25 08:20 | David Valencia Toscano; Jesús Torres Valderrama [20%] | 0.4h | 0.4h | 13.33 | 13.33 | 13.33 |
| 5 | 2 | **Registro de interesados** |  | 5.88d | 2025-09-18 08:00 A | 2025-09-25 17:00 |  | 100% |  |  | 2025-09-21 08:20 | 2025-09-18 08:00 | 2025-09-25 17:00 | 5.88d | 2025-09-18 08:00 | 2025-09-25 17:00 |  | 2.2h | 2.2h | 80 | 1,960 | 80 |
| 6 | 2.1 | Identificación de interesados | manual | 40min | 2025-09-18 08:00 A | 2025-09-18 08:40 A |  | 100% |  |  |  | 2025-09-18 08:00 | 2025-09-18 08:40 | 40min | 2025-09-18 08:00 | 2025-09-18 08:40 | David Valencia Toscano | 0.67h | 0.67h | 26.67 | 26.67 | 26.67 |
| 7 | 2.2 | Reunión con patrocinador sobre los interesados | manual | 1h | 2025-09-18 08:00 A | 2025-09-18 09:00 A | 6 | 100% |  |  |  | 2025-09-18 08:00 | 2025-09-18 09:00 | 1h | 2025-09-18 08:00 | 2025-09-18 09:00 | David Valencia Toscano; Jesús Torres Valderrama [20%] | 1.2h | 1.2h | 40 | 40 | 40 |
| 8 | 2.3 | Documentación en registro de interesados | manual | 20min | 2025-09-21 08:00 A | 2025-09-21 08:20 A | 7 | 100% |  |  |  | 2025-09-21 08:00 | 2025-09-21 08:20 | 20min | 2025-09-21 08:00 | 2025-09-21 08:20 | David Valencia Toscano | 0.33h | 0.33h | 13.33 | 13.33 | 13.33 |
| 9 | 3 | **Registro de supuestos** |  | 5.88d | 2025-09-18 08:00 | 2025-09-25 17:00 |  | 100% |  | 2025-09-18 10:20 | 2025-09-25 09:00 | 2025-09-18 08:00 | 2025-09-25 17:00 | 5.88d | 2025-09-18 08:00 | 2025-09-25 17:00 |  | 3.2h | 3.2h | 120 | 2,000 | 120 |
| 10 | 3.1 | Identificación de supuestos | manual | 1h | 2025-09-18 10:20 A | 2025-09-18 11:20 A | 8 | 100% |  |  |  | 2025-09-18 10:20 | 2025-09-18 11:20 | 1h | 2025-09-18 10:20 | 2025-09-18 11:20 | David Valencia Toscano | 1h | 1h | 40 | 40 | 40 |
| 11 | 3.2 | Documentación en registro de supuestos | manual | 1h | 2025-09-19 08:00 A | 2025-09-19 09:00 A | 10 | 100% |  |  |  | 2025-09-19 08:00 | 2025-09-19 09:00 | 1h | 2025-09-19 08:00 | 2025-09-19 09:00 | David Valencia Toscano | 1h | 1h | 40 | 40 | 40 |
| 12 | 3.3 | Revisión y validación de los supuestos | manual | 1h | 2025-09-25 08:00 A | 2025-09-25 09:00 A | 11 | 100% |  |  |  | 2025-09-25 08:00 | 2025-09-25 09:00 | 1h | 2025-09-25 08:00 | 2025-09-25 09:00 | David Valencia Toscano; Jesús Torres Valderrama [20%] | 1.2h | 1.2h | 40 | 40 | 40 |
| 13 | 4 | **Registro de requisitos** |  | 5.88d | 2025-09-25 08:00 A | 2025-10-02 17:00 |  | 100% |  |  | 2025-10-02 10:00 | 2025-09-25 08:00 | 2025-10-02 17:00 | 5.88d | 2025-09-25 08:00 | 2025-10-02 17:00 |  | 8.4h | 8.4h | 320 | 2,200 | 320 |
| 14 | 4.1 | Recopilación de requisitos | manual | 3h | 2025-09-25 08:00 A | 2025-09-25 11:00 A | 12 | 100% |  |  |  | 2025-09-25 08:00 | 2025-09-25 11:00 | 3h | 2025-09-25 08:00 | 2025-09-25 11:00 | David Valencia Toscano | 3h | 3h | 120 | 120 | 120 |
| 15 | 4.2 | Organización y documentación de requisitos | manual | 3h | 2025-09-28 08:00 A | 2025-09-28 11:00 A | 14 | 100% |  |  |  | 2025-09-28 08:00 | 2025-09-28 11:00 | 3h | 2025-09-28 08:00 | 2025-09-28 11:00 | David Valencia Toscano | 3h | 3h | 120 | 120 | 120 |
| 16 | 4.3 | Validación de requisitos con el cliente | manual | 2h | 2025-10-02 08:00 A | 2025-10-02 10:00 A | 15 | 100% |  |  |  | 2025-10-02 08:00 | 2025-10-02 10:00 | 2h | 2025-10-02 08:00 | 2025-10-02 10:00 | David Valencia Toscano; Jesús Torres Valderrama [20%] | 2.4h | 2.4h | 80 | 80 | 80 |
| 17 | 5 | **Arquitectura del sistema** |  | 4.88d | 2025-10-03 08:00 A | 2025-10-09 17:00 |  | 43% | 2.79d |  |  | 2025-10-03 08:00 | 2025-10-09 17:00 | 4.88d | 2025-10-03 08:00 | 2025-10-09 17:00 |  | 25.4h | 15h | 680 | 4,424 | 408 |
| 18 | 5.1 | Definición de la arquitectura | manual | 3h | 2025-10-03 08:00 A | 2025-10-03 11:00 A | 16 | 100% |  |  |  | 2025-10-03 08:00 | 2025-10-03 11:00 | 3h | 2025-10-03 08:00 | 2025-10-03 11:00 | Eloy Sancho Cebrero; Fernando Partal García; Iván Fernández Limárquez; María del Pino Pérez Domínguez; David Valencia Toscano | 15h | 15h | 408 | 408 | 408 |
| 19 | 5.2 | Documentación del sistema | manual | 2h | 2025-10-05 08:00 | 2025-10-05 10:00 | 18 |  |  |  |  | 2025-10-05 08:00 | 2025-10-05 10:00 | 2h | 2025-10-05 08:00 | 2025-10-05 10:00 | Eloy Sancho Cebrero; Fernando Partal García; Iván Fernández Limárquez; María del Pino Pérez Domínguez | 8h |  | 192 | 192 |  |
| 20 | 5.3 | Revisión y validación de la arquitectura | manual | 2h | 2025-10-09 08:00 | 2025-10-09 10:00 | 19 |  |  |  |  | 2025-10-09 08:00 | 2025-10-09 10:00 | 2h | 2025-10-09 08:00 | 2025-10-09 10:00 | David Valencia Toscano; Jesús Torres Valderrama [20%] | 2.4h |  | 80 | 80 |  |
| 21 | 6 | **Documentación técnica y funcional** |  | 24.88d | 2025-11-03 08:00 | 2025-12-05 17:00 |  |  |  |  |  | 2025-11-03 08:00 | 2025-12-05 17:00 | 24.88d | 2025-11-03 08:00 | 2025-12-05 17:00 |  | 34h |  | 848 | 19,952 |  |
| 22 | 6.1 | Redacción de documentación técnica | manual | 3h | 2025-11-03 08:00 | 2025-11-03 11:00 | 20 |  |  |  |  | 2025-11-03 08:00 | 2025-11-03 11:00 | 3h | 2025-11-03 08:00 | 2025-11-03 11:00 | Eloy Sancho Cebrero; Fernando Partal García; Iván Fernández Limárquez; María del Pino Pérez Domínguez | 12h |  | 288 | 288 |  |
| 23 | 6.2 | Redacción de documentación funcional | manual | 3h | 2025-11-06 08:00 | 2025-11-06 11:00 | 22 |  |  |  |  | 2025-11-06 08:00 | 2025-11-06 11:00 | 3h | 2025-11-06 08:00 | 2025-11-06 11:00 | Eloy Sancho Cebrero; Fernando Partal García; Iván Fernández Limárquez; María del Pino Pérez Domínguez | 12h |  | 288 | 288 |  |
| 24 | 6.3 | Revisión y validación | manual | 2h | 2025-11-09 08:00 | 2025-11-09 10:00 | 23 |  |  |  |  | 2025-11-09 08:00 | 2025-11-09 10:00 | 2h | 2025-11-09 08:00 | 2025-11-09 10:00 | Eloy Sancho Cebrero; Fernando Partal García; Iván Fernández Limárquez; María del Pino Pérez Domínguez; David Valencia Toscano | 10h |  | 272 | 272 |  |

| ID | WBS | Task | Type | Duration | Start | Finish | Predecessors | Complete | Remaining | Actual start | Baseline start | Baseline finish | Baseline duration | Baseline 1 start | Baseline 1 finish | Resources | Work | Actual work | Cost | Baseline cost | Actual cost |
| --- | --- | --- | --- | --- | --- | --- | --- | --- | --- | --- | --- | --- | --- | --- | --- | --- | --- | --- | --- | --- | --- |
| 25 | 7 | **Manuales de usuario** |  | 9.88d | 2025-11-24 08:00 | 2025-12-05 17:00 |  |  |  |  | 2025-11-24 08:00 | 2025-12-05 17:00 | 9.88d | 2025-11-24 08:00 | 2025-12-05 17:00 |  | 14.4h |  | 368 | 7,952 |  |
| 26 | 7.1 | Redacción del manual de usuario | manual | 3h | 2025-11-24 08:00 | 2025-11-24 11:00 | 24 |  |  |  | 2025-11-24 08:00 | 2025-11-24 11:00 | 3h | 2025-11-24 08:00 | 2025-11-24 11:00 | Eloy Sancho Cebrero; Fernando Partal García; Iván Fernández Limárquez; María del Pino Pérez Domínguez | 12h |  | 288 | 288 |  |
| 27 | 7.2 | Revisión y validación con el cliente | manual | 2h | 2025-12-05 08:00 | 2025-12-05 10:00 | 26 |  |  |  | 2025-12-05 08:00 | 2025-12-05 10:00 | 2h | 2025-12-05 08:00 | 2025-12-05 10:00 | David Valencia Toscano; Jesús Torres Valderrama [20%] | 2.4h |  | 80 | 80 |  |
| 28 | 8 | **Formación del equipo de desarrollo** |  | 1.75d | 2025-09-18 08:00 A | 2025-09-19 17:00 A |  | 100% |  |  | 2025-09-18 08:00 | 2025-09-19 17:00 | 1.75d | 2025-09-18 08:00 | 2025-09-19 17:00 |  | 60h | 60h | 1,440 | 2,784 | 1,440 |
| 29 | 8.1 | Realización de una formación de Django | manual | 15h | 2025-09-18 08:00 A | 2025-09-19 17:00 A |  | 100% |  |  | 2025-09-18 08:00 | 2025-09-19 17:00 | 15h | 2025-09-18 08:00 | 2025-09-19 17:00 | Eloy Sancho Cebrero; Fernando Partal García; Iván Fernández Limárquez; María del Pino Pérez Domínguez | 60h | 60h | 1,440 | 1,440 | 1,440 |
| 30 | 9 | **Visuales de la tienda y productos** |  | 5.88d | 2025-11-03 08:00 A | 2025-11-09 17:00 |  | 76% | 1.42d |  | 2025-11-03 08:00 | 2025-11-09 17:00 | 5.88d | 2025-11-03 08:00 | 2025-11-09 17:00 |  | 129h | 98h | 3,240 | 7,752 | 2,448 |
| 31 | 9.1 | Diseño funcional y técnico | manual | 6h | 2025-11-03 08:00 A | 2025-11-03 16:00 A | 29, 20, 16 | 100% |  |  | 2025-11-03 08:00 | 2025-11-03 16:00 | 6h | 2025-11-03 08:00 | 2025-11-03 16:00 | Eloy Sancho Cebrero; Fernando Partal García; Iván Fernández Limárquez; María del Pino Pérez Domínguez; David Valencia Toscano | 30h | 30h | 816 | 816 | 816 |
| 32 | 9.2 | Desarrollo de interfaz y vistas | manual | 12h | 2025-11-06 08:00 A | 2025-11-07 12:00 A | 31 | 100% |  |  | 2025-11-06 08:00 | 2025-11-07 12:00 | 12h | 2025-11-06 08:00 | 2025-11-07 12:00 | Eloy Sancho Cebrero; Fernando Partal García; Iván Fernández Limárquez; María del Pino Pérez Domínguez | 52h | 52h | 1,248 | 1,248 | 1,248 |
| 33 | 9.3 | Integración y pruebas | manual | 8h | 2025-11-07 08:00 A | 2025-11-07 18:00 | 32 | 50% | 4h |  | 2025-11-07 08:00 | 2025-11-07 18:00 | 8h | 2025-11-07 08:00 | 2025-11-07 18:00 | Eloy Sancho Cebrero; Fernando Partal García; Iván Fernández Limárquez; María del Pino Pérez Domínguez | 32h | 16h | 768 | 768 | 384 |
| 34 | 9.4 | Coordinación y validación | manual | 3h | 2025-11-09 08:00 | 2025-11-09 11:00 | 33 |  |  |  | 2025-11-09 08:00 | 2025-11-09 11:00 | 3h | 2025-11-09 08:00 | 2025-11-09 11:00 | Eloy Sancho Cebrero; Fernando Partal García; Iván Fernández Limárquez; María del Pino Pérez Domínguez; David Valencia Toscano | 15h |  | 408 | 408 |  |
| 35 | 10 | **Proceso de compra** |  | 4.88d | 2025-11-04 08:00 | 2025-11-09 17:00 |  | 70% | 1.44d | 2025-11-03 08:00 | 2025-11-04 08:00 | 2025-11-09 17:00 | 4.88d | 2025-11-04 08:00 | 2025-11-09 17:00 |  | 62.8h | 45.2h | 1,608 | 6,912 | 1,152 |
| 36 | 10.1 | Definición del flujo de compra | manual | 6h | 2025-11-03 08:00 A | 2025-11-03 16:00 A | 31 | 100% |  |  | 2025-11-03 08:00 | 2025-11-03 16:00 | 6h | 2025-11-03 08:00 | 2025-11-03 16:00 | David Valencia Toscano; Jesús Torres Valderrama [20%] | 7.2h | 7.2h | 240 | 240 | 240 |
| 37 | 10.2 | Desarrollo de selección y pedidos | manual | 6h | 2025-11-06 08:00 A | 2025-11-06 16:00 A | 36 | 100% |  |  | 2025-11-06 08:00 | 2025-11-06 16:00 | 6h | 2025-11-06 08:00 | 2025-11-06 16:00 | Eloy Sancho Cebrero; Fernando Partal García; Iván Fernández Limárquez; María del Pino Pérez Domínguez | 24h | 24h | 576 | 576 | 576 |
| 38 | 10.3 | Integración con pasarela de pago y contrarrembolso | manual | 7h | 2025-11-07 08:00 A | 2025-11-07 17:00 | 37 | 50% | 3.5h |  | 2025-11-07 08:00 | 2025-11-07 17:00 | 7h | 2025-11-07 08:00 | 2025-11-07 17:00 | Eloy Sancho Cebrero; Fernando Partal García; Iván Fernández Limárquez; María del Pino Pérez Domínguez | 28h | 14h | 672 | 672 | 336 |
| 39 | 10.4 | Validación del proceso de compra | manual | 3h | 2025-11-09 08:00 | 2025-11-09 11:00 | 38 |  |  |  | 2025-11-09 08:00 | 2025-11-09 11:00 | 3h | 2025-11-09 08:00 | 2025-11-09 11:00 | Jesús Torres Valderrama [20%]; David Valencia Toscano | 3.6h |  | 120 | 120 |  |
| 40 | 11 | **Mejoras de la tienda y compras** |  | 5.88d | 2025-11-10 08:00 | 2025-11-16 17:00 |  | 50% | 2.94d | 2025-11-06 08:00 | 2025-11-10 08:00 | 2025-11-16 17:00 | 5.88d | 2025-11-10 08:00 | 2025-11-16 17:00 |  | 59h | 28h | 1,464 | 1,464 | 672 |
| 41 | 11.1 | Análisis de feedback y mejoras de la iteración 1 | manual | 4h | 2025-11-10 08:00 | 2025-11-10 12:00 | 39 |  |  |  | 2025-11-10 08:00 | 2025-11-10 12:00 | 4h | 2025-11-10 08:00 | 2025-11-10 12:00 | Eloy Sancho Cebrero; Fernando Partal García; Iván Fernández Limárquez; María del Pino Pérez Domínguez | 16h |  | 384 | 384 |  |
| 42 | 11.2 | Implementación de cesta de la compra | manual | 3h | 2025-11-06 08:00 A | 2025-11-06 11:00 A | 39 | 100% |  |  | 2025-11-06 08:00 | 2025-11-06 11:00 | 3h | 2025-11-06 08:00 | 2025-11-06 11:00 | Eloy Sancho Cebrero; Fernando Partal García; Iván Fernández Limárquez; María del Pino Pérez Domínguez | 12h | 12h | 288 | 288 | 288 |
| 43 | 11.3 | Implementación de buscar en tres partes | manual | 4h | 2025-11-07 08:00 A | 2025-11-07 12:00 A | 39 | 100% |  |  | 2025-11-07 08:00 | 2025-11-07 12:00 | 4h | 2025-11-07 08:00 | 2025-11-07 12:00 | Eloy Sancho Cebrero; Fernando Partal García; Iván Fernández Limárquez; María del Pino Pérez Domínguez | 16h | 16h | 384 | 384 | 384 |
| 44 | 11.4 | Coordinación y validación de los procesos de mejora | manual | 3h | 2025-11-13 08:00 | 2025-11-13 11:00 | 39, 41, 42, 43 |  |  |  | 2025-11-13 08:00 | 2025-11-13 11:00 | 3h | 2025-11-13 08:00 | 2025-11-13 11:00 | David Valencia Toscano; Eloy Sancho Cebrero; Fernando Partal García; Iván Fernández Limárquez; María del Pino Pérez Domínguez | 15h |  | 408 | 408 |  |
| 45 | 12 | **Login y formas de entrega** |  | 5.88d | 2025-11-10 08:00 | 2025-11-16 17:00 |  | 12% | 5.17d | 2025-11-06 08:00 | 2025-11-10 08:00 | 2025-11-16 17:00 | 5.88d | 2025-11-10 08:00 | 2025-11-16 17:00 |  | 33.2h | 6h | 864 | 864 | 144 |
| 46 | 12.1 | Definición de autenticación y envíos | manual | 4h | 2025-11-13 08:00 | 2025-11-13 12:00 | 44 |  |  |  | 2025-11-13 08:00 | 2025-11-13 12:00 | 4h | 2025-11-13 08:00 | 2025-11-13 12:00 | David Valencia Toscano; Jesús Torres Valderrama [20%] | 4.8h |  | 160 | 160 |  |
| 47 | 12.2 | Desarrollo del login de usuarios | manual | 1.5h | 2025-11-06 08:00 A | 2025-11-06 09:30 A | 46 | 100% |  |  | 2025-11-06 08:00 | 2025-11-06 09:30 | 1.5h | 2025-11-06 08:00 | 2025-11-06 09:30 | Eloy Sancho Cebrero; Fernando Partal García; Iván Fernández Limárquez; María del Pino Pérez Domínguez | 6h | 6h | 144 | 144 | 144 |
| 48 | 12.3 | Implementación de métodos de entrega | manual | 5h | 2025-11-15 08:00 | 2025-11-15 13:00 | 46 |  |  |  | 2025-11-15 08:00 | 2025-11-15 13:00 | 5h | 2025-11-15 08:00 | 2025-11-15 13:00 | Eloy Sancho Cebrero; Fernando Partal García; Iván Fernández Limárquez; María del Pino Pérez Domínguez | 20h |  | 480 | 480 |  |
| 49 | 12.4 | Coordinación y validación del login y formas de entrega | manual | 2h | 2025-11-16 08:00 | 2025-11-16 10:00 | 47, 48 |  |  |  | 2025-11-16 08:00 | 2025-11-16 10:00 | 2h | 2025-11-16 08:00 | 2025-11-16 10:00 | David Valencia Toscano; Jesús Torres Valderrama [20%] | 2.4h |  | 80 | 80 |  |

| ID | WBS | Task | Type | Duration | Start | Finish | Predecessors | Baseline start | Baseline finish | Baseline duration | Baseline 1 start | Baseline 1 finish | Resources | Work | Cost | Baseline cost |
| --- | --- | --- | --- | --- | --- | --- | --- | --- | --- | --- | --- | --- | --- | --- | --- | --- |
| 50 | 13 | **Gestión de envío** |  | 5.88d | 2025-11-17 08:00 | 2025-11-23 17:00 |  | 2025-11-17 08:00 | 2025-11-23 17:00 | 5.88d | 2025-11-17 08:00 | 2025-11-23 17:00 |  | 50h | 1,256 | 1,256 |
| 51 | 13.1 | Definición de reglas de envío | manual | 2h | 2025-11-17 08:00 | 2025-11-17 10:00 | 49 | 2025-11-17 08:00 | 2025-11-17 10:00 | 2h | 2025-11-17 08:00 | 2025-11-17 10:00 | David Valencia Toscano; Jesús Torres Valderrama [20%] | 2.4h | 80 | 80 |
| 52 | 13.2 | Desarrollo de generación de envíos y gestión de los mismos | manual | 5h | 2025-11-18 08:00 | 2025-11-18 13:00 | 51 | 2025-11-18 08:00 | 2025-11-18 13:00 | 5h | 2025-11-18 08:00 | 2025-11-18 13:00 | Eloy Sancho Cebrero; Fernando Partal García; Iván Fernández Limárquez; María del Pino Pérez Domínguez | 20h | 480 | 480 |
| 53 | 13.3 | Integración con proveedor logístico | manual | 6h | 2025-11-19 08:00 | 2025-11-19 16:00 | 52 | 2025-11-19 08:00 | 2025-11-19 16:00 | 6h | 2025-11-19 08:00 | 2025-11-19 16:00 | Eloy Sancho Cebrero; Fernando Partal García; Iván Fernández Limárquez; María del Pino Pérez Domínguez | 24h | 576 | 576 |
| 54 | 13.4 | Coordinación y validación de las gestión de envíos | manual | 3h | 2025-11-20 08:00 | 2025-11-20 11:00 | 53 | 2025-11-20 08:00 | 2025-11-20 11:00 | 3h | 2025-11-20 08:00 | 2025-11-20 11:00 | David Valencia Toscano; Jesús Torres Valderrama [20%] | 3.6h | 120 | 120 |
| 55 | 14 | **Funciones de administración** |  | 5.88d | 2025-11-17 08:00 | 2025-11-23 17:00 |  | 2025-11-17 08:00 | 2025-11-23 17:00 | 5.88d | 2025-11-17 08:00 | 2025-11-23 17:00 |  | 53.6h | 1,376 | 1,376 |
| 56 | 14.1 | Definición de módulos de administración | manual | 5h | 2025-11-20 08:00 | 2025-11-20 13:00 | 54 | 2025-11-20 08:00 | 2025-11-20 13:00 | 5h | 2025-11-20 08:00 | 2025-11-20 13:00 | David Valencia Toscano; Jesús Torres Valderrama [20%] | 6h | 200 | 200 |
| 57 | 14.2 | Desarrollo de gestión de productos y usuarios | manual | 6h | 2025-11-21 08:00 | 2025-11-21 16:00 | 56 | 2025-11-21 08:00 | 2025-11-21 16:00 | 6h | 2025-11-21 08:00 | 2025-11-21 16:00 | Eloy Sancho Cebrero; Fernando Partal García; Iván Fernández Limárquez; María del Pino Pérez Domínguez | 24h | 576 | 576 |
| 58 | 14.3 | Desarrollo de gestión de pedidos y envíos | manual | 5h | 2025-11-22 08:00 | 2025-11-22 13:00 | 57 | 2025-11-22 08:00 | 2025-11-22 13:00 | 5h | 2025-11-22 08:00 | 2025-11-22 13:00 | Eloy Sancho Cebrero; Fernando Partal García; Iván Fernández Limárquez; María del Pino Pérez Domínguez | 20h | 480 | 480 |
| 59 | 14.4 | Coordinación y validación de funciones de administración | manual | 3h | 2025-11-23 08:00 | 2025-11-23 11:00 | 58 | 2025-11-23 08:00 | 2025-11-23 11:00 | 3h | 2025-11-23 08:00 | 2025-11-23 11:00 | Jesús Torres Valderrama [20%]; David Valencia Toscano | 3.6h | 120 | 120 |
| 60 | 15 | **Alojamiento de la aplicación en server** |  | 9.88d | 2025-11-24 08:00 | 2025-12-05 17:00 |  | 2025-11-24 08:00 | 2025-12-05 17:00 | 9.88d | 2025-11-24 08:00 | 2025-12-05 17:00 |  | 62.6h | 1,584 | 1,584 |
| 61 | 15.1 | Preparación del entorno de despliegue | manual | 3h | 2025-11-24 08:00 | 2025-11-24 11:00 | 59 | 2025-11-24 08:00 | 2025-11-24 11:00 | 3h | 2025-11-24 08:00 | 2025-11-24 11:00 | David Valencia Toscano; Eloy Sancho Cebrero; Fernando Partal García; Iván Fernández Limárquez; María del Pino Pérez Domínguez | 15h | 408 | 408 |
| 62 | 15.2 | Configuración y subida de app | manual | 4h | 2025-11-25 08:00 | 2025-11-25 12:00 | 61 | 2025-11-25 08:00 | 2025-11-25 12:00 | 4h | 2025-11-25 08:00 | 2025-11-25 12:00 | Eloy Sancho Cebrero; Fernando Partal García; Iván Fernández Limárquez; María del Pino Pérez Domínguez | 16h | 384 | 384 |
| 63 | 15.3 | Pruebas de despliegue y seguridad | manual | 4h | 2025-11-26 08:00 | 2025-11-26 12:00 | 62 | 2025-11-26 08:00 | 2025-11-26 12:00 | 4h | 2025-11-26 08:00 | 2025-11-26 12:00 | Eloy Sancho Cebrero; Fernando Partal García; Iván Fernández Limárquez; María del Pino Pérez Domínguez | 16h | 384 | 384 |
| 64 | 15.4 | Supervisión y validación final del proyecto | manual | 3h | 2025-11-27 08:00 | 2025-11-27 11:00 | 63 | 2025-11-27 08:00 | 2025-11-27 11:00 | 3h | 2025-11-27 08:00 | 2025-11-27 11:00 | David Valencia Toscano; Eloy Sancho Cebrero; Fernando Partal García; Iván Fernández Limárquez; Jesús Torres Valderrama [20%]; María del Pino Pérez Domínguez | 15.6h | 408 | 408 |
