Schedule from MS Project, 2025-09-18 to 2025-12-05, costs in €, A marks actual dates.
Microsoft

## Calendars

- Calendario-Sevilla: Mon-Fri 09:00-13:00, 15:00-19:00; Sat-Sun off. Exceptions (off unless hours are given): 2025-10-13 (Festividad Día de la Hispanidad), 2025-11-01 (Festividad Todos los Santos).

## Resources

| Resource | Group | Rate |
| --- | --- | --- |
| Patrocinador | Stakeholders |  |
| Jefe de proyecto | Dirección | 40 |
| Programador | Equipo de desarrollo | 24 |
| Analista | Equipo de desarrollo | 28 |
| Reservas de contingencia |  |  |
| Reservas de gestión |  |  |

## Schedule

| ID | WBS | Task | Type | Duration | Start | Finish | Predecessors | Complete | Remaining | Actual start | Actual finish | Baseline start | Baseline finish | Baseline duration | Constraint | Resources | Work | Actual work | Cost | Baseline cost | Actual cost |
| --- | --- | --- | --- | --- | --- | --- | --- | --- | --- | --- | --- | --- | --- | --- | --- | --- | --- | --- | --- | --- | --- |
| 1 | 1 | **Proyecto** |  | 55.88d | 2025-09-18 08:00 A | 2025-12-05 17:00 |  | 35% | 36.41d |  |  | 2025-09-18 08:00 | 2025-12-05 17:00 | 55.88d |  | Reservas de contingencia [0.1%]; Reservas de gestión [0.1%] | 203.47h | 69.77h | 7,401.33 | 7,869.33 | 2,069.33 |
| 2 | 1.1 | **Acta de constitución** |  | 5.88d | 2025-09-18 08:00 | 2025-09-25 17:00 |  | 100% |  | 2025-09-18 09:00 | 2025-09-18 16:20 | 2025-09-18 08:00 | 2025-09-25 17:00 | 5.88d |  |  | 5.67h | 5.67h | 213.33 | 213.33 | 213.33 |
| 3 | 1.1.1 | Redacción del acta de constitución | manual | 3h | 2025-09-18 09:00 A | 2025-09-18 12:00 A |  | 100% |  |  |  | 2025-09-18 09:00 | 2025-09-18 12:00 | 3h |  | Jefe de proyecto | 3h | 3h | 120 | 120 | 120 |
| 4 | 1.1.2 | Revisión y ajustes sobre el acta de constitución | manual | 1h | 2025-09-18 12:00 A | 2025-09-18 13:00 A | 3 | 100% |  |  |  | 2025-09-18 12:00 | 2025-09-18 13:00 | 1h |  | Jefe de proyecto | 1h | 1h | 40 | 40 | 40 |
| 5 | 1.1.3 | Presentación y validación del acta de constitución | manual | 20min | 2025-09-18 15:00 A | 2025-09-18 15:20 A | 4 | 100% |  |  |  | 2025-09-18 15:00 | 2025-09-18 15:20 | 20min |  | Jefe de proyecto; Patrocinador | 0.67h | 0.67h | 13.33 | 13.33 | 13.33 |
| 6 | 1.1.4 | Seguimiento de costes para el acta de constitución | manual | 1h | 2025-09-18 15:20 A | 2025-09-18 16:20 A | 5 | 100% |  |  |  | 2025-09-18 15:20 | 2025-09-18 16:20 | 1h |  | Jefe de proyecto | 1h | 1h | 40 | 40 | 40 |
| 7 | 1.2 | **Registro de interesados** |  | 5.88d | 2025-09-18 08:00 | 2025-09-25 17:00 |  | 100% |  | 2025-09-18 09:00 | 2025-09-18 17:00 | 2025-09-18 08:00 | 2025-09-25 17:00 | 5.88d |  |  | 4h | 4h | 120 | 120 | 120 |
| 8 | 1.2.1 | Identificación de interesados | manual | 40min | 2025-09-18 09:00 A | 2025-09-18 09:40 A |  | 100% |  |  |  | 2025-09-18 09:00 | 2025-09-18 09:40 | 40min |  | Jefe de proyecto | 0.67h | 0.67h | 26.67 | 26.67 | 26.67 |
| 9 | 1.2.2 | Reunión con patrocinador sobre los interesados | manual | 1h | 2025-09-18 09:40 A | 2025-09-18 10:40 A | 8 | 100% |  |  |  | 2025-09-18 09:40 | 2025-09-18 10:40 | 1h |  | Jefe de proyecto; Patrocinador | 2h | 2h | 40 | 40 | 40 |
| 10 | 1.2.3 | Documentación en registro de interesados | manual | 20min | 2025-09-18 10:40 A | 2025-09-18 11:00 A | 9 | 100% |  |  |  | 2025-09-18 10:40 | 2025-09-18 11:00 | 20min |  | Jefe de proyecto | 0.33h | 0.33h | 13.33 | 13.33 | 13.33 |
| 11 | 1.2.4 | Seguimiento de costes para el registro de interesados | manual | 1h | 2025-09-18 16:00 A | 2025-09-18 17:00 A | 10 | 100% |  |  |  | 2025-09-18 16:00 | 2025-09-18 17:00 | 1h | finish no earlier than 2025-09-18 17:00 | Jefe de proyecto | 1h | 1h | 40 | 40 | 40 |
| 12 | 1.3 | **Registro de supuestos** |  | 5.88d | 2025-09-18 08:00 | 2025-09-25 17:00 |  | 100% |  | 2025-09-19 16:00 | 2025-09-23 17:00 | 2025-09-18 08:00 | 2025-09-25 17:00 | 5.88d |  |  | 4.2h | 4.2h | 160 | 160 | 160 |
| 13 | 1.3.1 | Identificación de supuestos | manual | 1h | 2025-09-19 16:00 A | 2025-09-19 17:00 A | 11 | 100% |  |  |  | 2025-09-19 16:00 | 2025-09-19 17:00 | 1h | finish no earlier than 2025-09-19 17:00 | Jefe de proyecto | 1h | 1h | 40 | 40 | 40 |
| 14 | 1.3.2 | Documentación en registro de supuestos | manual | 1h | 2025-09-19 17:00 A | 2025-09-19 18:00 A | 13 | 100% |  |  |  | 2025-09-19 17:00 | 2025-09-19 18:00 | 1h | finish no earlier than 2025-09-19 17:00 | Jefe de proyecto | 1h | 1h | 40 | 40 | 40 |
| 15 | 1.3.3 | Revisión y validación de los supuestos | manual | 1h | 2025-09-22 16:00 A | 2025-09-22 17:00 A | 14 | 100% |  |  |  | 2025-09-22 16:00 | 2025-09-22 17:00 | 1h | finish no earlier than 2025-09-22 17:00 | Jefe de proyecto | 1h | 1h | 40 | 40 | 40 |
| 16 | 1.3.4 | Seguimiento de costes para el registro de supuestos | manual | 1h | 2025-09-23 16:00 A | 2025-09-23 17:00 A | 15 | 100% |  |  |  | 2025-09-23 16:00 | 2025-09-23 17:00 | 1h | finish no earlier than 2025-09-23 17:00 | Jefe de proyecto; Patrocinador [20%] | 1.2h | 1.2h | 40 | 40 | 40 |
| 17 | 1.4 | **Registro de requisitos** |  | 5.88d | 2025-09-25 08:00 | 2025-10-02 17:00 |  | 100% |  | 2025-09-25 09:00 | 2025-09-26 12:00 | 2025-09-25 08:00 | 2025-10-02 17:00 | 5.88d |  |  | 11.6h | 11.6h | 440 | 440 | 440 |
| 18 | 1.4.1 | Recopilación de requisitos | manual | 3h | 2025-09-25 09:00 A | 2025-09-25 12:00 A | 16 | 100% |  |  |  | 2025-09-25 09:00 | 2025-09-25 12:00 | 3h |  | Jefe de proyecto | 3h | 3h | 120 | 120 | 120 |
| 19 | 1.4.2 | Organización y documentación de requisitos | manual | 3h | 2025-09-25 12:00 A | 2025-09-25 17:00 A | 18 | 100% |  |  |  | 2025-09-25 12:00 | 2025-09-25 17:00 | 3h |  | Jefe de proyecto | 3h | 3h | 120 | 120 | 120 |
| 20 | 1.4.3 | Validación de requisitos con el cliente | manual | 2h | 2025-09-25 17:00 A | 2025-09-25 19:00 A | 19 | 100% |  |  |  | 2025-09-25 17:00 | 2025-09-25 19:00 | 2h |  | Jefe de proyecto; Patrocinador [20%] | 2.4h | 2.4h | 80 | 80 | 80 |
| 21 | 1.4.4 | Seguimiento de costes para el registro de requisitos | manual | 1h | 2025-09-26 09:00 A | 2025-09-26 10:00 A | 20 | 100% |  |  |  | 2025-09-26 09:00 | 2025-09-26 10:00 | 1h |  | Jefe de proyecto; Patrocinador [20%] | 1.2h | 1.2h | 40 | 40 | 40 |
| 22 | 1.4.5 | Revisar riesgos de alcance y cambios en requisitos al cierre de cada iteración | manual | 2h | 2025-09-26 10:00 A | 2025-09-26 12:00 A | 21 | 100% |  |  |  | 2025-09-26 10:00 | 2025-09-26 12:00 | 2h |  | Jefe de proyecto | 2h | 2h | 80 | 80 | 80 |
| 23 | 1.5 | **Arquitectura del sistema** |  | 4.88d | 2025-10-03 08:00 | 2025-10-09 17:00 |  | 17% | 4.06d | 2025-10-02 12:00 |  | 2025-10-03 08:00 | 2025-10-09 17:00 | 4.88d |  |  | 7h | 1h | 240 | 320 | 40 |
| 24 | 1.5.1 | Definición de la arquitectura | manual | 1h | 2025-10-02 12:00 A | 2025-10-02 13:00 A | 20 | 100% |  |  |  | 2025-10-02 12:00 | 2025-10-02 17:00 | 3h | finish no earlier than 2025-10-02 17:00 | Jefe de proyecto | 1h | 1h | 40 | 120 | 40 |
| 25 | 1.5.2 | Documentación del sistema | manual | 2h | 2025-10-02 17:00 | 2025-10-02 19:00 | 24 |  |  |  |  | 2025-10-02 17:00 | 2025-10-02 19:00 | 2h | finish no earlier than 2025-10-02 17:00 | Jefe de proyecto | 2h |  | 80 | 80 |  |
| 26 | 1.5.3 | Revisión y validación de la arquitectura | manual | 2h | 2025-10-03 09:00 | 2025-10-03 11:00 | 25 |  |  |  |  | 2025-10-03 09:00 | 2025-10-03 11:00 | 2h | finish no earlier than 2025-10-02 17:00 | Jefe de proyecto | 2h |  | 80 | 80 |  |
| 27 | 1.5.4 | Seguimiento de costes para la arquitectura del sistema | manual | 1h | 2025-10-03 16:00 | 2025-10-03 17:00 | 26 |  |  |  |  | 2025-10-03 16:00 | 2025-10-03 17:00 | 1h | finish no earlier than 2025-10-03 17:00 | Jefe de proyecto; Patrocinador | 2h |  | 40 | 40 |  |

| ID | WBS | Task | Type | Duration | Start | Finish | Predecessors | Complete | Remaining | Actual start | Baseline start | Baseline finish | Baseline duration | Constraint | Resources | Work | Actual work | Cost | Baseline cost | Actual cost |
| --- | --- | --- | --- | --- | --- | --- | --- | --- | --- | --- | --- | --- | --- | --- | --- | --- | --- | --- | --- | --- |
| 28 | 1.6 | **Documentación técnica y funcional** |  | 24.88d | 2025-11-03 08:00 | 2025-12-05 17:00 |  |  |  |  | 2025-11-03 08:00 | 2025-12-05 17:00 | 24.88d |  |  | 11h |  | 360 | 360 |  |
| 29 | 1.6.1 | Redacción de documentación técnica | manual | 3h | 2025-11-28 12:00 | 2025-11-28 17:00 | 27 |  |  |  | 2025-11-28 12:00 | 2025-11-28 17:00 | 3h | finish no earlier than 2025-11-28 17:00 | Jefe de proyecto | 3h |  | 120 | 120 |  |
| 30 | 1.6.2 | Redacción de documentación funcional | manual | 3h | 2025-12-01 12:00 | 2025-12-01 17:00 | 27 |  |  |  | 2025-12-01 12:00 | 2025-12-01 17:00 | 3h | finish no earlier than 2025-12-01 17:00 | Jefe de proyecto | 3h |  | 120 | 120 |  |
| 31 | 1.6.3 | Revisión y validación de la documentación técnica y funcional | manual | 2h | 2025-12-01 17:00 | 2025-12-01 19:00 | 30, 29 |  |  |  | 2025-12-01 17:00 | 2025-12-01 19:00 | 2h |  | Jefe de proyecto; Patrocinador | 4h |  | 80 | 80 |  |
| 32 | 1.6.4 | Seguimiento de costes para la documentación técnica y funcional | manual | 1h | 2025-12-02 09:00 | 2025-12-02 10:00 | 31 |  |  |  | 2025-12-02 09:00 | 2025-12-02 10:00 | 1h |  | Jefe de proyecto | 1h |  | 40 | 40 |  |
| 33 | 1.7 | **Manuales de usuario** |  | 9.88d | 2025-11-24 08:00 | 2025-12-05 17:00 |  |  |  |  | 2025-11-24 08:00 | 2025-12-05 17:00 | 9.88d |  |  | 9h |  | 280 | 280 |  |
| 34 | 1.7.1 | Redacción del manual de usuario | manual | 3h | 2025-12-02 09:00 | 2025-12-02 12:00 | 31 |  |  |  | 2025-12-02 09:00 | 2025-12-02 12:00 | 3h | finish no earlier than 2025-11-27 17:00 | Jefe de proyecto | 3h |  | 120 | 120 |  |
| 35 | 1.7.2 | Revisión y validación con el cliente | manual | 2h | 2025-12-02 12:00 | 2025-12-02 16:00 | 34 |  |  |  | 2025-12-02 12:00 | 2025-12-02 16:00 | 2h | start no earlier than 2025-11-27 08:00 | Jefe de proyecto; Patrocinador | 4h |  | 80 | 80 |  |
| 36 | 1.7.3 | Revisión del proceso de validación de documentación | manual | 1h | 2025-12-02 16:00 | 2025-12-02 17:00 | 35 |  |  |  | 2025-12-02 16:00 | 2025-12-02 17:00 | 1h | finish no earlier than 2025-11-28 17:00 | Jefe de proyecto | 1h |  | 40 | 40 |  |
| 37 | 1.7.4 | Seguimiento de costes para el manual de usuario | manual | 1h | 2025-12-02 17:00 | 2025-12-02 18:00 | 36 |  |  |  | 2025-12-02 17:00 | 2025-12-02 18:00 | 1h | finish no earlier than 2025-11-28 17:00 | Jefe de proyecto | 1h |  | 40 | 40 |  |
| 38 | 1.8 | **Formación del equipo de desarrollo** |  | 2.12d | 2025-09-18 09:00 A | 2025-09-22 10:00 A |  | 100% |  |  | 2025-09-18 09:00 | 2025-09-22 10:00 | 2.12d |  |  | 17h | 17h | 440 | 440 | 440 |
| 39 | 1.8.1 | Realización de una formación de Django | manual | 15h | 2025-09-18 09:00 A | 2025-09-19 18:00 A |  | 100% |  |  | 2025-09-18 09:00 | 2025-09-19 18:00 | 15h |  | Programador | 15h | 15h | 360 | 360 | 360 |
| 40 | 1.8.2 | Seguimiento de costes para la formación | manual | 1h | 2025-09-19 18:00 A | 2025-09-19 19:00 A | 39 | 100% |  |  | 2025-09-19 18:00 | 2025-09-19 19:00 | 1h |  | Jefe de proyecto | 1h | 1h | 40 | 40 | 40 |
| 41 | 1.8.3 | Comprobar riesgos técnicos de configuración y compatibilidad del entorno de trabajo | manual | 1h | 2025-09-22 09:00 A | 2025-09-22 10:00 A | 40 | 100% |  |  | 2025-09-22 09:00 | 2025-09-22 10:00 | 1h |  | Jefe de proyecto | 1h | 1h | 40 | 40 | 40 |
| 42 | 1.9 | **Visuales de la tienda y productos** |  | 5.88d | 2025-11-03 08:00 | 2025-11-09 17:00 |  | 66% | 2.01d | 2025-11-03 09:00 | 2025-11-03 08:00 | 2025-11-09 17:00 | 5.88d |  |  | 19.6h | 12.8h | 520 | 640 | 324 |
| 43 | 1.9.1 | Desarrollo de interfaz y vistas | manual | 7h | 2025-11-03 09:00 A | 2025-11-03 18:00 A | 41 | 100% |  |  | 2025-11-03 09:00 | 2025-11-04 13:00 | 12h |  | Programador | 7h | 7h | 168 | 288 | 168 |
| 44 | 1.9.2 | Integración y pruebas | manual | 8h | 2025-11-04 15:00 A | 2025-11-05 13:00 | 43 | 50% | 4h |  | 2025-11-04 15:00 | 2025-11-05 13:00 | 8h |  | Programador | 8h | 4h | 192 | 192 | 96 |
| 45 | 1.9.3 | Coordinación y validación | manual | 3h | 2025-11-06 12:00 A | 2025-11-06 17:00 | 44 | 50% | 1.5h |  | 2025-11-06 12:00 | 2025-11-06 17:00 | 3h | finish no earlier than 2025-11-06 17:00 | Jefe de proyecto; Patrocinador [20%] | 3.6h | 1.8h | 120 | 120 | 60 |
| 46 | 1.9.4 | Seguimiento de costes para los visuales de la tienda y productos | manual | 1h | 2025-11-07 16:00 | 2025-11-07 17:00 | 45 |  |  |  | 2025-11-07 16:00 | 2025-11-07 17:00 | 1h | finish no earlier than 2025-11-07 17:00 | Jefe de proyecto | 1h |  | 40 | 40 |  |
| 47 | 1.10 | **Proceso de compra** |  | 4.88d | 2025-11-04 08:00 | 2025-11-09 17:00 |  | 53% | 2.29d | 2025-11-04 09:00 | 2025-11-04 08:00 | 2025-11-09 17:00 | 4.88d |  |  | 16.6h | 8.5h | 456 | 640 | 212 |
| 48 | 1.10.1 | Definición del flujo de compra | manual | 2h | 2025-11-04 09:00 A | 2025-11-04 11:00 A | 41 | 100% |  |  | 2025-11-04 09:00 | 2025-11-04 17:00 | 6h |  | Analista | 2h | 2h | 56 | 168 | 56 |
| 49 | 1.10.2 | Desarrollo de selección y pedidos | manual | 3h | 2025-11-04 17:00 A | 2025-11-05 10:00 A | 48 | 100% |  |  | 2025-11-04 17:00 | 2025-11-05 13:00 | 6h |  | Programador | 3h | 3h | 72 | 144 | 72 |
| 50 | 1.10.3 | Integración con pasarela de pago y contrarrembolso | manual | 7h | 2025-11-05 15:00 A | 2025-11-06 12:00 | 49 | 50% | 3.5h |  | 2025-11-05 15:00 | 2025-11-06 12:00 | 7h |  | Programador | 7h | 3.5h | 168 | 168 | 84 |
| 51 | 1.10.4 | Validación del proceso de compra | manual | 3h | 2025-11-06 12:00 | 2025-11-06 17:00 | 50 |  |  |  | 2025-11-06 12:00 | 2025-11-06 17:00 | 3h |  | Patrocinador [20%]; Jefe de proyecto | 3.6h |  | 120 | 120 |  |
| 52 | 1.10.5 | Seguimiento de costes para el proceso de compra | manual | 1h | 2025-11-07 16:00 | 2025-11-07 17:00 | 51 |  |  |  | 2025-11-07 16:00 | 2025-11-07 17:00 | 1h | finish no earlier than 2025-11-07 17:00 | Jefe de proyecto | 1h |  | 40 | 40 |  |

| ID | WBS | Task | Type | Duration | Start | Finish | Predecessors | Complete | Remaining | Actual start | Baseline start | Baseline finish | Baseline duration | Constraint | Resources | Work | Actual work | Cost | Baseline cost | Actual cost |
| --- | --- | --- | --- | --- | --- | --- | --- | --- | --- | --- | --- | --- | --- | --- | --- | --- | --- | --- | --- | --- |
| 53 | 1.11 | **Mejoras de la tienda y compras** |  | 5.88d | 2025-11-10 08:00 A | 2025-11-16 17:00 |  | 33% | 3.92d |  | 2025-11-10 08:00 | 2025-11-16 17:00 | 5.88d |  |  | 12.6h | 4h | 368 | 440 | 96 |
| 54 | 1.11.1 | Análisis de feedback y mejoras de la iteración 1 | manual | 4h | 2025-11-10 09:00 | 2025-11-10 13:00 | 51 |  |  |  | 2025-11-10 09:00 | 2025-11-10 13:00 | 4h |  | Analista | 4h |  | 112 | 112 |  |
| 55 | 1.11.2 | Implementación de cesta de la compra | manual | 3h | 2025-11-10 08:00 A | 2025-11-10 11:00 A |  | 100% |  |  | 2025-11-10 08:00 | 2025-11-10 11:00 | 3h |  | Programador | 3h | 3h | 72 | 72 | 72 |
| 56 | 1.11.3 | Implementación de buscar en tres partes | manual | 1h | 2025-11-11 11:00 A | 2025-11-11 12:00 A | 51 | 100% |  |  | 2025-11-11 11:00 | 2025-11-11 17:00 | 4h | finish no earlier than 2025-11-11 17:00 | Programador | 1h | 1h | 24 | 96 | 24 |
| 57 | 1.11.4 | Coordinación y validación de los procesos de mejora | manual | 3h | 2025-11-11 17:00 | 2025-11-12 10:00 | 54, 55, 56 |  |  |  | 2025-11-11 17:00 | 2025-11-12 10:00 | 3h | finish no earlier than 2025-11-11 17:00 | Jefe de proyecto; Patrocinador [20%] | 3.6h |  | 120 | 120 |  |
| 58 | 1.11.5 | Seguimiento de costes para las mejoras de la tienda y compras | manual | 1h | 2025-11-13 16:00 | 2025-11-13 17:00 | 57 |  |  |  | 2025-11-13 16:00 | 2025-11-13 17:00 | 1h | finish no earlier than 2025-11-13 17:00 | Jefe de proyecto | 1h |  | 40 | 40 |  |
| 59 | 1.12 | **Login y formas de entrega** |  | 5.88d | 2025-11-10 08:00 | 2025-11-16 17:00 |  | 7% | 5.48d | 2025-11-12 10:00 | 2025-11-10 08:00 | 2025-11-16 17:00 | 5.88d |  |  | 15.4h | 1h | 456 | 468 | 24 |
| 60 | 1.12.1 | Definición de autenticación y envíos | manual | 4h | 2025-11-12 10:00 | 2025-11-12 16:00 | 57 |  |  |  | 2025-11-12 10:00 | 2025-11-12 16:00 | 4h |  | Analista | 4h |  | 112 | 112 |  |
| 61 | 1.12.2 | Desarrollo del login de usuarios | manual | 1h | 2025-11-12 16:00 A | 2025-11-12 17:00 A | 60 | 100% |  |  | 2025-11-12 16:00 | 2025-11-12 17:30 | 1.5h |  | Programador | 1h | 1h | 24 | 36 | 24 |
| 62 | 1.12.3 | Implementación de métodos de entrega | manual | 5h | 2025-11-13 10:00 | 2025-11-13 17:00 | 60 |  |  |  | 2025-11-13 10:00 | 2025-11-13 17:00 | 5h | finish no earlier than 2025-11-13 17:00 | Programador | 5h |  | 120 | 120 |  |
| 63 | 1.12.4 | Coordinación y validación del login y formas de entrega | manual | 2h | 2025-11-13 17:00 | 2025-11-13 19:00 | 61, 62 |  |  |  | 2025-11-13 17:00 | 2025-11-13 19:00 | 2h |  | Jefe de proyecto; Patrocinador [20%] | 2.4h |  | 80 | 80 |  |
| 64 | 1.12.5 | Seguimiento de costes para login y formas de entrega | manual | 1h | 2025-11-14 09:00 | 2025-11-14 10:00 | 63 |  |  |  | 2025-11-14 09:00 | 2025-11-14 10:00 | 1h | finish no earlier than 2025-11-13 17:00 | Jefe de proyecto | 1h |  | 40 | 40 |  |
| 65 | 1.12.6 | Vigilar riesgos funcionales y de integración durante el desarrollo del flujo de compra | manual | 2h | 2025-11-14 12:00 | 2025-11-14 17:00 | 64 |  |  |  | 2025-11-14 12:00 | 2025-11-14 17:00 | 2h | finish no earlier than 2025-11-14 17:00 | Jefe de proyecto | 2h |  | 80 | 80 |  |
| 66 | 1.13 | **Gestión de envío** |  | 5.88d | 2025-11-17 08:00 | 2025-11-23 17:00 |  |  |  |  | 2025-11-17 08:00 | 2025-11-23 17:00 | 5.88d |  |  | 21.6h |  | 592 | 592 |  |
| 67 | 1.13.1 | Análisis de feedback y mejoras de la iteración 2 | manual | 4h | 2025-11-17 09:00 | 2025-11-17 16:00 | 58, 65 |  |  |  | 2025-11-17 09:00 | 2025-11-17 16:00 | 4h |  | Analista | 4h |  | 112 | 112 |  |
| 68 | 1.13.2 | Definición de reglas de envío | manual | 2h | 2025-11-17 16:00 | 2025-11-17 18:00 | 67 |  |  |  | 2025-11-17 16:00 | 2025-11-17 18:00 | 2h |  | Analista | 2h |  | 56 | 56 |  |
| 69 | 1.13.3 | Desarrollo de generación de envíos y gestión de los mismos | manual | 5h | 2025-11-18 10:00 | 2025-11-18 17:00 | 68 |  |  |  | 2025-11-18 10:00 | 2025-11-18 17:00 | 5h | finish no earlier than 2025-11-18 17:00 | Programador | 5h |  | 120 | 120 |  |
| 70 | 1.13.4 | Desarrollo del sistema de seguimiento de envíos | manual | 6h | 2025-11-19 09:00 | 2025-11-19 17:00 | 69 |  |  |  | 2025-11-19 09:00 | 2025-11-19 17:00 | 6h | finish no earlier than 2025-11-19 17:00 | Programador | 6h |  | 144 | 144 |  |
| 71 | 1.13.5 | Coordinación y validación de las gestión de envíos | manual | 3h | 2025-11-20 12:00 | 2025-11-20 17:00 | 70 |  |  |  | 2025-11-20 12:00 | 2025-11-20 17:00 | 3h | finish no earlier than 2025-11-20 17:00 | Jefe de proyecto; Patrocinador [20%] | 3.6h |  | 120 | 120 |  |
| 72 | 1.13.6 | Seguimiento de costes para la gestión de envío | manual | 1h | 2025-11-21 16:00 | 2025-11-21 17:00 | 71 |  |  |  | 2025-11-21 16:00 | 2025-11-21 17:00 | 1h | finish no earlier than 2025-11-21 17:00 | Jefe de proyecto | 1h |  | 40 | 40 |  |
| 73 | 1.14 | **Funciones de administración** |  | 5.88d | 2025-11-17 08:00 | 2025-11-23 17:00 |  |  |  |  | 2025-11-17 08:00 | 2025-11-23 17:00 | 5.88d |  |  | 24.6h |  | 724 | 724 |  |
| 74 | 1.14.1 | Definición de módulos de administración | manual | 5h | 2025-11-17 16:00 | 2025-11-18 11:00 | 67 |  |  |  | 2025-11-17 16:00 | 2025-11-18 11:00 | 5h |  | Analista | 5h |  | 140 | 140 |  |
| 75 | 1.14.2 | Desarrollo de gestión de productos y usuarios | manual | 6h | 2025-11-18 11:00 | 2025-11-18 19:00 | 74 |  |  |  | 2025-11-18 11:00 | 2025-11-18 19:00 | 6h |  | Programador | 6h |  | 144 | 144 |  |
| 76 | 1.14.3 | Desarrollo de gestión de pedidos y envíos | manual | 5h | 2025-11-19 09:00 | 2025-11-19 16:00 | 75 |  |  |  | 2025-11-19 09:00 | 2025-11-19 16:00 | 5h |  | Programador | 5h |  | 120 | 120 |  |
| 77 | 1.14.4 | Coordinación y validación de funciones de administración | manual | 3h | 2025-11-19 16:00 | 2025-11-19 19:00 | 76 |  |  |  | 2025-11-19 16:00 | 2025-11-19 19:00 | 3h |  | Patrocinador [20%]; Jefe de proyecto | 3.6h |  | 120 | 120 |  |
| 78 | 1.14.5 | Seguimiento de costes para las funciones de administración | manual | 1h | 2025-11-20 09:00 | 2025-11-20 10:00 | 77 |  |  |  | 2025-11-20 09:00 | 2025-11-20 10:00 | 1h |  | Jefe de proyecto | 1h |  | 40 | 40 |  |
| 79 | 1.14.6 | Controlar riesgos de seguridad y dependencias de autenticación y métodos de envío | manual | 4h | 2025-11-21 10:00 | 2025-11-21 17:00 | 78 |  |  |  | 2025-11-21 10:00 | 2025-11-21 17:00 | 4h | finish no earlier than 2025-11-21 17:00 | Jefe de proyecto | 4h |  | 160 | 160 |  |

| ID | WBS | Task | Type | Duration | Start | Finish | Predecessors | Baseline start | Baseline finish | Baseline duration | Total slack | Free slack | Constraint | Resources | Work | Cost | Baseline cost |
| --- | --- | --- | --- | --- | --- | --- | --- | --- | --- | --- | --- | --- | --- | --- | --- | --- | --- |
| 80 | 1.15 | **Alojamiento de la aplicación en server** |  | 9.88d | 2025-11-24 08:00 | 2025-12-05 17:00 |  | 2025-11-24 08:00 | 2025-12-05 17:00 | 9.88d |  |  |  |  | 23.6h | 732 | 732 |
| 81 | 1.15.1 | Análisis de feedback y mejoras de la iteración 3 | manual | 2h | 2025-11-24 09:00 | 2025-11-24 12:00 | 72, 79 | 2025-11-24 09:00 | 2025-11-24 12:00 | 2h |  |  |  | Analista | 2h | 56 | 56 |
| 82 | 1.15.2 | Preparación del entorno de despliegue | manual | 3h | 2025-11-24 12:00 | 2025-11-24 17:00 | 81 | 2025-11-24 12:00 | 2025-11-24 17:00 | 3h |  |  |  | Analista | 3h | 84 | 84 |
| 83 | 1.15.3 | Configuración y subida de app | manual | 4h | 2025-11-25 11:00 | 2025-11-25 17:00 | 82 | 2025-11-25 11:00 | 2025-11-25 17:00 | 4h |  |  | finish no earlier than 2025-11-25 17:00 | Programador | 4h | 96 | 96 |
| 84 | 1.15.4 | Pruebas de despliegue y seguridad | manual | 4h | 2025-11-25 17:00 | 2025-11-26 11:00 | 83 | 2025-11-25 17:00 | 2025-11-26 11:00 | 4h |  |  |  | Programador | 4h | 96 | 96 |
| 85 | 1.15.5 | Supervisión y validación final del proyecto |  | 4h | 2025-11-27 11:00 | 2025-11-27 17:00 | 84 | 2025-11-27 11:00 | 2025-11-27 17:00 | 4h | 5d | 4.88d | finish no earlier than 2025-11-27 17:00 | Jefe de proyecto; Patrocinador [20%] | 3.6h | 120 | 120 |
| 86 | 1.15.6 | Seguimiento de costes para el alojamiento de la aplicación en el server |  | 1h | 2025-12-04 16:00 | 2025-12-04 17:00 | 85 | 2025-12-04 16:00 | 2025-12-04 17:00 | 1h | 0.12d | 0d | finish no earlier than 2025-12-04 17:00 | Jefe de proyecto | 1h | 40 | 40 |
| 87 | 1.15.7 | Valoración del proyecto |  | 2h | 2025-12-04 17:00 | 2025-12-05 10:00 | 86 | 2025-12-04 17:00 | 2025-12-05 10:00 | 2h | 0.12d |  | finish no earlier than 2025-12-04 17:00 | Jefe de proyecto | 2h | 80 | 80 |
| 88 | 1.15.8 | Supervisar riesgos de despliegue y disponibilidad; validar backups y plan de rollback |  | 4h | 2025-12-05 11:00 | 2025-12-05 17:00 | 87 | 2025-12-05 11:00 | 2025-12-05 17:00 | 4h | 0d |  | finish no earlier than 2025-12-05 17:00 | Jefe de proyecto | 4h | 160 | 160 |
